# КП Забаровский_обновленный.xml

Schedule from MS Project XML, 2023-11-14 to 2024-05-21.

## Calendars

- Стандартный: Mon-Fri 09:00-13:00, 14:00-18:00; Sat-Sun off.

## Resources

| Resource | Group |
| --- | --- |
| Бетонщик-гидроизолировщик 4 разр | рабочие |
| Бетонщик-гидроизолировщик 2 разр | рабочие |
| Разнорабочий | рабочие |
| Машинист бульдозера 6 разр. |  |
| Землекоп 3 разр. |  |
| Монтажник-конструкций 4 разряда |  |
| Монтажник-конструкций 3 разр. |  |
| Монтажник-конструкций 2 разр. |  |
| Машинист крана 6 разр. |  |
| Такелажники на монтаже 2 разр. |  |
| Гидроизолировщик 4 разр. |  |
| Гидроизолировщик 3 разр. |  |
| Гидроизолировщик 2 разр. |  |
| Землекоп 2 разр. |  |
| Землекоп 1 разр. |  |
| Монтажник-конструкций 5 разр. |  |
| Плотник 4 разр. |  |
| Плотник 3 разр. |  |
| Плотник 2 разр. |  |
| Арматурщик 4 разр. |  |
| Арматурщик 2 разр. |  |
| Машинист бетоносмесителя передвижного 3 разр. |  |
| Машинист бетононасосной установки 4 разр. |  |
| Бетонщик 4 разр. |  |
| Бетонщик 2 разр. |  |
| Плотник 5 разр. |  |
| Подсобный рабочий 1 разр. |  |
| Кровельщик-изолировщик 3 разр. |  |
| Кровельщик-изолировщик 2 разр. |  |
| Машинист крана 5 разр. |  |
| Каменщик-плотник 4 разр. |  |
| Каменьщик-плотник 2 разр. |  |
| Бетонщик-гидроизолировщик 3 разр. |  |

## Schedule

| ID | WBS | Task | Duration | Start | Finish | Predecessors | Total slack | Resources | Work |
| --- | --- | --- | --- | --- | --- | --- | --- | --- | --- |
| 1 | 1 | **Строительство жилого дома** | 28d | 2023-11-14 | 2023-12-21 |  | 0d |  | 664h |
| 2 | 1.1 | **Нулевой цикл** | 28d | 2023-11-14 | 2023-12-21 |  | 0d |  | 664h |
| 3 | 1.1.1 | А. Подготовительные работы | 7d | 2023-11-14 | 2023-11-22 |  | 0d | Разнорабочий [600%] | 336h |
| 4 | 1.1.2 | Б1. Земляные работы | 5d | 2023-11-23 | 2023-11-29 | 3 | 0d | Машинист бульдозера 6 разр. | 40h |
| 5 | 1.1.3 | Б2. Доработка грунта вручную | 8d | 2023-11-30 | 2023-12-11 | 4 | 0d | Землекоп 3 разр. | 64h |
| 6 | 1.1.4 | В1. Устройство фундаментных плит | 2d | 2023-12-12 | 2023-12-13 | 5 | 0d | Монтажник-конструкций 4 разряда; Монтажник-конструкций 3 разр.; Монтажник-конструкций 2 разр.; Машинист крана 6 разр.; Такелажники на монтаже 2 разр. [200%] | 80h |
| 7 | 1.1.5 | В2. Устройство гидроизоляции плит фундамента | 5d | 2023-12-14 | 2023-12-20 | 6 | 0d | Гидроизолировщик 4 разр.; Гидроизолировщик 3 разр.; Гидроизолировщик 2 разр. | 120h |
| 8 | 1.1.6 | Г. Обратная засыпка | 1d | 2023-12-21 | 2023-12-21 | 7 | 0d | Машинист бульдозера 6 разр.; Землекоп 2 разр.; Землекоп 1 разр. | 24h |
| 9 | 2 | **Надземная часть** | 100d | 2023-12-22 | 2024-05-09 |  | 0d |  | 3672h |
| 10 | 2.1 | **Д1. Устройство стен** | 77d | 2024-01-09 | 2024-04-24 |  | 0d |  | 2600h |
| 11 | 2.1.1 | 1 этаж | 33d | 2024-01-09 | 2024-02-22 | 14FS+7d | 0d | Монтажник-конструкций 4 разряда; Монтажник-конструкций 3 разр.; Монтажник-конструкций 2 разр.; Машинист крана 6 разр.; Монтажник-конструкций 5 разр. | 1320h |
| 12 | 2.1.2 | 2 этаж | 32d | 2024-03-12 | 2024-04-24 | 15FS+7d | 0d | Машинист крана 6 разр.; Монтажник-конструкций 2 разр.; Монтажник-конструкций 3 разр.; Монтажник-конструкций 4 разряда; Монтажник-конструкций 5 разр. | 1280h |
| 13 | 2.2 | **Д2. Устройство опалубки перекрытий, армирование, заливка бетоном, разборка опалубки** | 50d | 2023-12-22 | 2024-02-29 |  | 0d |  | 824h |
| 14 | 2.2.1 | 1 этаж | 5d | 2023-12-22 | 2023-12-28 | 8 | 0d | Арматурщик 2 разр. [300%]; Арматурщик 4 разр.; Бетонщик 2 разр.; Бетонщик 4 разр.; Машинист бетононасосной установки 4 разр.; Машинист бетоносмесителя передвижного 3 разр.; Плотник 2 разр.; Плотник 3 разр.; Плотник 4 разр. | 416h |
| 15 | 2.2.2 | 2 этаж | 5d | 2024-02-23 | 2024-02-29 | 11 | 0d | Арматурщик 2 разр. [300%]; Арматурщик 4 разр.; Бетонщик 2 разр.; Бетонщик 4 разр.; Машинист бетононасосной установки 4 разр.; Машинист бетоносмесителя передвижного 3 разр.; Плотник 2 разр.; Плотник 3 разр.; Плотник 4 разр. | 408h |
| 16 | 2.3 | **Д3. Устройство лестниц** | 1d | 2024-04-25 | 2024-04-25 |  | 0d |  | 16h |
| 17 | 2.3.1 | 1 этаж | 1d | 2024-04-25 | 2024-04-25 | 12 | 0d | Плотник 3 разр.; Плотник 5 разр. | 16h |
| 18 | 2.4 | Е1. Устройство кровли | 2d | 2024-04-26 | 2024-04-29 | 17 | 0d | Плотник 2 разр. [200%]; Плотник 3 разр.; Плотник 5 разр.; Подсобный рабочий 1 разр. | 64h |
| 19 | 2.5 | Е2. Устройство изоляции кровли | 3d | 2024-04-30 | 2024-05-02 | 18 | 0d | Кровельщик-изолировщик 2 разр. [200%]; Кровельщик-изолировщик 3 разр. | 48h |
| 20 | 2.6 | **И. Заполнение проемов** | 3d | 2024-05-03 | 2024-05-07 |  | 0d |  | 72h |
| 21 | 2.6.1 | 1 этаж | 2d | 2024-05-03 | 2024-05-06 | 19 | 0d | Каменщик-плотник 4 разр.; Каменьщик-плотник 2 разр.; Машинист крана 5 разр. | 48h |
| 22 | 2.6.2 | 2 этаж | 1d | 2024-05-07 | 2024-05-07 | 21 | 0d | Каменщик-плотник 4 разр.; Каменьщик-плотник 2 разр.; Машинист крана 5 разр. | 24h |
| 23 | 2.7 | **К. Устройство полов** | 2d | 2024-05-08 | 2024-05-09 |  | 0d |  | 48h |
| 24 | 2.7.1 | 1 этаж | 1d | 2024-05-08 | 2024-05-08 | 22 | 0d | Бетонщик-гидроизолировщик 2 разр; Бетонщик-гидроизолировщик 3 разр.; Бетонщик-гидроизолировщик 4 разр | 24h |
| 25 | 2.7.2 | 2 этаж | 1d | 2024-05-09 | 2024-05-09 | 24 | 0d | Бетонщик-гидроизолировщик 2 разр; Бетонщик-гидроизолировщик 3 разр.; Бетонщик-гидроизолировщик 4 разр | 24h |
| 26 | 3 | Н. Разборка бытового городка | 4d | 2024-05-10 | 2024-05-15 | 25 | 0d | Разнорабочий [600%] | 192h |
| 27 | 4 | О. Благоустройство и озеленение | 4d | 2024-05-16 | 2024-05-21 | 26 | 0d | Разнорабочий [600%] | 192h |
